# заново-5 (6.04)

How a schedule from MS Project changed from version to version. A marks actual dates.

## Version 1 (data date 2025-04-06, saved 2025-04-30)

| ID | WBS | Task | Duration | Start | Finish | Predecessors | Complete | Total float |
| --- | --- | --- | --- | --- | --- | --- | --- | --- |
| 1 | 1 | **Строительсво колледжа** | 146.03d | 2025-03-24 A | 2025-10-14 |  | 11% | 0d |
| 2 |  | Начало проекта | 0d | 2025-03-24 A | 2025-03-24 A |  | 100% |  |
| 3 |  | подписание договора | 5d | 2025-03-24 A | 2025-03-28 A |  | 100% |  |
| 4 | 1.3 | **устройство фундамента** | 27.02d | 2025-03-31 A | 2025-05-07 |  | 54% | 0d |
| 5 |  | погружение свай | 5.03d | 2025-03-31 A | 2025-04-07 | 3 | 99% | 0d |
| 6 |  | срубка свай | 10.03d | 2025-03-31 A | 2025-04-14 | 5 | 99% | 0d |
| 7 |  | армирование ростверка | 9.03d | 2025-03-31 A | 2025-04-11 | 5 | 79% | 1d |
| 8 |  | бетонирование ростверка | 12d | 2025-04-14 | 2025-04-30 | 6, 7 |  | 0d |
| 9 |  | набор прочности монолитного ростверка | 5d | 2025-04-30 | 2025-05-07 | 8 |  | 0d |
| 10 |  | завершен монолитный ростверк | 0d | 2025-05-07 | 2025-05-07 | 9 |  | 0d |
| 11 | 1.4 | **установка каркаса** | 30d | 2025-05-07 | 2025-06-18 |  |  | 0d |
| 12 |  | кладка из кирпича под плиту перекрытия | 4d | 2025-05-07 | 2025-05-13 | 10 |  | 0d |
| 13 |  | монтаж плит перекрытия, 1 этаж | 2d | 2025-05-13 | 2025-05-15 | 12 |  | 0d |
| 14 |  | кладка стен и перестенков 1 этажа | 8d | 2025-05-15 | 2025-05-27 | 13 |  | 0d |
| 15 |  | монтаж плит перекрытия, 2 этаж | 2d | 2025-05-27 | 2025-05-29 | 14 |  | 0d |
| 16 |  | кладка стен и перестенков 2 этажа | 10d | 2025-05-29 | 2025-06-12 | 15 |  | 0d |
| 17 |  | монтаж плит перекрытия между 2 этажом | 2d | 2025-06-12 | 2025-06-16 | 16 |  | 0d |
| 18 |  | кладка парапета и вентиляционных шахт | 2d | 2025-06-16 | 2025-06-18 | 17 |  | 0d |
| 19 |  | завершено установка каркаса | 0d | 2025-06-18 | 2025-06-18 | 18 |  | 0d |
| 20 | 1.5 | **монтаж кровли** | 41d | 2025-06-18 | 2025-08-14 |  |  | 5.97d |
| 21 |  | монтаж стропильной системы | 7d | 2025-06-18 | 2025-06-27 | 19 |  | 5.97d |
| 22 |  | обустройство слоя пароизоляции | 4d | 2025-06-27 | 2025-07-03 | 21 |  | 5.97d |
| 23 |  | укладка утепляющих материалов | 4d | 2025-07-03 | 2025-07-09 | 22 |  | 5.97d |
| 24 |  | устройство слоя гидроизоляции | 3d | 2025-07-09 | 2025-07-14 | 23 |  | 5.97d |
| 25 |  | утепление кровли со стяжкой | 10d | 2025-07-14 | 2025-07-28 | 24 |  | 5.97d |
| 26 |  | металлочерепица основной кровли | 5d | 2025-07-28 | 2025-08-04 | 25 |  | 5.97d |
| 27 |  | обшивка вентиляционных шахт и установка козырьков | 8d | 2025-08-04 | 2025-08-14 | 26 |  | 5.97d |
| 28 |  | завершён монтаж кровли | 0d | 2025-08-14 | 2025-08-14 | 27 |  | 5.97d |
| 29 | 1.6 | **устройство фасада** | 84d | 2025-06-18 | 2025-10-14 |  |  | 0d |
| 30 |  | утепление фасада и грунтовка | 62d | 2025-06-18 | 2025-09-12 | 19 |  | 0d |
| 31 |  | декоративная штукатурка фасада | 7d | 2025-09-12 | 2025-09-23 | 30 |  | 0d |
| 32 |  | установка молдинга | 15d | 2025-09-23 | 2025-10-14 | 31 |  | 0d |
| 33 |  | покраска фасада , грунтовка и установка отмостки | 6d | 2025-08-14 | 2025-08-22 | 28 |  | 5.97d |
| 34 |  | облицовка рваным камнем | 4d | 2025-08-22 | 2025-08-28 | 33 |  | 5.97d |
| 35 |  | завершено устройство фасада | 0d | 2025-08-28 | 2025-08-28 | 34 |  | 5.97d |
| 36 | 1.7 | **благоустройство участка** | 104d | 2025-05-07 | 2025-09-30 |  |  | 10d |
| 37 |  | планирование территории | 4d | 2025-05-07 | 2025-05-13 | 10 |  | 100d |
| 38 |  | устройство тротуаров подъездных путей к гаражу | 10d | 2025-05-13 | 2025-05-27 | 37 |  | 100d |
| 39 |  | озеленение участка | 20d | 2025-08-28 | 2025-09-25 | 35 |  | 5.97d |
| 40 |  | ограждение участка | 3d | 2025-09-25 | 2025-09-30 | 39 |  | 5.97d |
| 41 |  | завершено благоустройство | 0d | 2025-09-30 | 2025-09-30 | 40 |  | 5.97d |
| 42 |  | Окончание проекта | 0d | 2025-09-30 | 2025-09-30 | 41 |  | 5.97d |

## Version 2 (data date 2025-04-06, saved 2025-05-08)

Note of the change: Pre-intergation to Jmix: +read config file with client and secret and path to jmix API +pulling active tasks from current project (and send to a tiny Node test server on port3000 (included))

Last finish stays 2025-10-14.

Changed:

| ID | Task | Other |
| --- | --- | --- |
| 1 | **Строительсво коттеджа** | was named Строительсво колледжа |
